# airbnb_henrique_joao

Schedule from MS Project, 2018-11-26 to 2019-09-26, costs in €.

## Calendars

- Standard: Mon-Fri 08:00-12:00, 13:00-17:00; Sat-Sun off. Exceptions (off unless hours are given): 2018-12-01 (Restauração da Independência), 2018-12-08 (Dia da Imaculada Conceição), 2018-12-24 to 2018-12-26 (Festividade Natalicia), 2019-01-01 to 2019-01-02 (Comemoração Ano Novo), 2019-04-19 (Sexta-Feira Santa), 2019-04-21 (Páscoa), 2019-04-25 to 2019-04-26 (Dia da Liberdade - 25 de Abril ( dia 26 oferecido)), 2019-05-01 (Dia do Trabalhador), 2019-06-10 (Dia de Portugal), 2019-06-20 (Corpo de Deus), 2019-08-15 (Assunção de Nossa Senhora).

## Resources

| Resource | Rate |
| --- | --- |
| Gestor de Projetos | 27.1 |
| Analista | 12.5 |
| Programador Sénior | 18.75 |
| Programador Junior1 | 9.8 |
| Programador Junior2 | 9.8 |
| Engenheiro de Software | 20.83 |
| Engenheiro de Redes e Segurança Informática | 23 |
| Designer/UX Developer | 12.5 |
| Escritório | 890 |
| Despesas Escritório | 300 |
| Computadores/Periféricos | 10000 |
| Credenciais Software | 700 |
| Servidor | 1300 |
| Dominio | 10 |
| User Tester | 3 |

## Schedule

| ID | WBS | Task | Type | Duration | Start | Finish | Predecessors | Total slack | Constraint | Resources | Work | Cost |
| --- | --- | --- | --- | --- | --- | --- | --- | --- | --- | --- | --- | --- |
| 1 | 1 | **Desenvolvimento da aplicação Airbnb** |  | 207d | 2018-11-26 | 2019-09-26 |  | 0d |  |  | 3562h | 82,239.08 |
| 2 | 1.1 | **Definição do projeto a desenvolver** |  | 0.38d | 2018-11-26 | 2018-11-26 |  | 0d |  |  | 6h | 118.8 |
| 3 | 1.1.1 | Reunião com cliente |  | 3h | 2018-11-26 | 2018-11-26 |  | 0d |  | Analista; Gestor de Projetos | 6h | 118.8 |
| 4 | 1.2 | **Análise e compra de recursos** |  | 6d | 2018-11-26 | 2018-12-04 |  | 0d |  |  | 96h | 14,918.08 |
| 5 | 1.2.1 | Identificação de ferramentas e recursos |  | 2d | 2018-11-26 | 2018-11-28 | 3 | 0d |  | Analista; Designer/UX Developer; Engenheiro de Redes e Segurança Informática; Engenheiro de Software; Programador Sénior | 80h | 1,401.28 |
| 6 | 1.2.2 | Escolha e compra de hardware |  | 2d | 2018-11-28 | 2018-11-30 | 5 | 202.62d |  | Computadores/Periféricos; Servidor |  | 11,300 |
| 7 | 1.2.3 | Escolha e compra de software |  | 2d | 2018-11-28 | 2018-11-30 | 5 | 202.62d |  | Credenciais Software; Dominio |  | 710 |
| 8 | 1.2.4 | Arrendamento de escritório |  | 3d | 2018-11-28 | 2018-12-03 | 5 | 0d |  | Despesas Escritório; Escritório |  | 1,190 |
| 9 | 1.2.5 | Análise de custos |  | 1d | 2018-12-03 | 2018-12-04 | 8 | 0d |  | Analista; Gestor de Projetos | 16h | 316.8 |
| 10 | 1.3 | **Pagamentos contas** |  | 163.06d | 2018-12-26 | 2019-08-26 |  | 0d |  |  |  | 10,800 |
| 11 | 1.3.1 | Pagamentos contas 2 | manual | 30min | 2018-12-26 | 2018-12-26 |  |  | start no earlier than 2018-12-26 | Despesas Escritório; Dominio; Escritório |  | 1,200 |
| 12 | 1.3.2 | Pagamentos contas 3 | manual | 30min | 2019-01-26 | 2019-01-26 |  |  | start no earlier than 2019-01-26 | Despesas Escritório; Dominio; Escritório |  | 1,200 |
| 13 | 1.3.3 | Pagamentos contas 4 | manual | 30min | 2019-02-26 | 2019-02-26 |  |  | start no earlier than 2019-02-26 | Despesas Escritório; Dominio; Escritório |  | 1,200 |
| 14 | 1.3.4 | Pagamentos contas 5 | manual | 30min | 2019-03-26 | 2019-03-26 |  |  | start no earlier than 2019-03-26 | Despesas Escritório; Dominio; Escritório |  | 1,200 |
| 15 | 1.3.5 | Pagamentos contas 6 | manual | 30min | 2019-04-26 | 2019-04-26 |  |  | start no earlier than 2019-04-26 | Despesas Escritório; Dominio; Escritório |  | 1,200 |
| 16 | 1.3.6 | Pagamentos contas 7 | manual | 30min | 2019-05-26 | 2019-05-26 |  |  | start no earlier than 2019-05-26 | Despesas Escritório; Dominio; Escritório |  | 1,200 |
| 17 | 1.3.7 | Pagamentos contas 8 | manual | 30min | 2019-06-26 | 2019-06-26 |  |  | start no earlier than 2019-06-26 | Despesas Escritório; Dominio; Escritório |  | 1,200 |
| 18 | 1.3.8 | Pagamentos contas 9 | manual | 30min | 2019-07-26 | 2019-07-26 |  |  | start no earlier than 2019-07-26 | Despesas Escritório; Dominio; Escritório |  | 1,200 |
| 19 | 1.3.9 | Pagamentos contas 10 | manual | 30min | 2019-08-26 | 2019-08-26 |  |  | start no earlier than 2019-08-26 | Despesas Escritório; Dominio; Escritório |  | 1,200 |
| 20 | 1.4 | **Análise do sistema** |  | 23d | 2018-12-04 | 2019-01-11 |  | 0d |  |  | 344h | 5,899.36 |
| 21 | 1.4.1 | Estudo do estado da arte |  | 2d | 2018-12-04 | 2018-12-06 | 9 | 0d |  | Analista; Designer/UX Developer; Engenheiro de Software | 48h | 733.28 |
| 22 | 1.4.2 | Caracterização dos atores |  | 8d | 2018-12-06 | 2018-12-18 | 21 | 0d |  | Engenheiro de Software; Designer/UX Developer | 128h | 2,133.12 |
| 23 | 1.4.3 | Diagrama dos casos de uso |  | 7d | 2018-12-18 | 2018-12-31 | 22 | 0d |  | Engenheiro de Software | 56h | 1,166.48 |
| 24 | 1.4.4 | Requisistos funcionais e não funcionais |  | 7d | 2018-12-31 | 2019-01-11 | 23 | 0d |  | Engenheiro de Software; Analista | 112h | 1,866.48 |

| ID | WBS | Task | Duration | Start | Finish | Predecessors | Total slack | Resources | Work | Cost |
| --- | --- | --- | --- | --- | --- | --- | --- | --- | --- | --- |
| 25 | 1.5 | **Desenho do sistema** | 72.75d | 2019-01-11 | 2019-04-29 |  | 0d |  | 850h | 13,013.4 |
| 26 | 1.5.1 | **Modelação de interfaces** | 20d | 2019-01-11 | 2019-02-08 |  | 0d |  | 240h | 3,000 |
| 27 | 1.5.1.1 | Storyboard da navegação | 10d | 2019-01-11 | 2019-01-25 | 24 | 0d | Designer/UX Developer; Analista | 160h | 2,000 |
| 28 | 1.5.1.2 | Interfaces dos casos de uso | 10d | 2019-01-25 | 2019-02-08 | 27 | 0d | Designer/UX Developer | 80h | 1,000 |
| 29 | 1.5.2 | **Modelação da base de dados** | 20d | 2019-02-08 | 2019-03-08 |  | 0d |  | 160h | 3,000 |
| 30 | 1.5.2.1 | Diagrama E/R | 10d | 2019-02-08 | 2019-02-22 | 28 | 0d | Programador Sénior | 80h | 1,500 |
| 31 | 1.5.2.2 | Modelo físico | 10d | 2019-02-22 | 2019-03-08 | 30 | 0d | Programador Sénior | 80h | 1,500 |
| 32 | 1.5.3 | **Modelação UML** | 20d | 2019-03-08 | 2019-04-05 |  | 0d |  | 240h | 4,832.8 |
| 33 | 1.5.3.1 | Diagrama de classes | 10d | 2019-03-08 | 2019-03-22 | 31 | 0d | Engenheiro de Software; Programador Sénior | 160h | 3,166.4 |
| 34 | 1.5.3.2 | Diagramas de sequência | 10d | 2019-03-22 | 2019-04-05 | 33 | 0d | Engenheiro de Software | 80h | 1,666.4 |
| 35 | 1.5.4 | **Testes ao protótipo não funcional** | 12.75d | 2019-04-05 | 2019-04-29 |  | 0d |  | 210h | 2,180.6 |
| 36 | 1.5.4.1 | Planeamento dos testes | 3d | 2019-04-05 | 2019-04-10 | 34 | 0d | Designer/UX Developer; Analista | 48h | 600 |
| 37 | 1.5.4.2 | Execução dos testes | 5d | 2019-04-10 | 2019-04-17 | 36 | 0d | Analista; User Tester | 80h | 620 |
| 38 | 1.5.4.3 | Análise de resultados | 2d | 2019-04-17 | 2019-04-22 | 37 | 0d | Designer/UX Developer; Analista | 32h | 400 |
| 39 | 1.5.4.4 | Propostas de redesenho | 2d | 2019-04-22 | 2019-04-24 | 38 | 0d | User Tester; Designer/UX Developer | 32h | 248 |
| 40 | 1.5.4.5 | Apresentação do protótipo não funcional ao cliente | 3h | 2019-04-24 | 2019-04-24 | 39 | 0d | Gestor de Projetos; Designer/UX Developer; Analista | 9h | 156.3 |
| 41 | 1.5.4.6 | Propostas de redesenho por parte do cliente | 3h | 2019-04-24 | 2019-04-29 | 40 | 0d | Designer/UX Developer; Gestor de Projetos; Analista | 9h | 156.3 |
| 42 | 1.6 | **Desenvolvimento e testes** | 87d | 2019-04-29 | 2019-09-03 |  | 0d |  | 1768h | 29,590.24 |
| 43 | 1.6.1 | Execução da base de dados | 10d | 2019-04-29 | 2019-05-14 | 41 | 94.88d | Programador Junior1; Programador Sénior | 160h | 2,284 |
| 44 | 1.6.2 | Desenvolvimento das interfaces | 10d | 2019-04-29 | 2019-05-14 | 41 | 0d | Designer/UX Developer | 80h | 1,000 |
| 45 | 1.6.3 | Teste às interfaces | 4d | 2019-05-14 | 2019-05-20 | 44 | 0d | Designer/UX Developer; Programador Junior2 | 64h | 713.6 |
| 46 | 1.6.4 | Desenvolvimento da inserção de anúncios | 15d | 2019-05-20 | 2019-06-11 | 45 | 0d | Programador Sénior; Engenheiro de Redes e Segurança Informática | 240h | 5,010 |
| 47 | 1.6.5 | Testes à inserção de anúncios | 3d | 2019-06-11 | 2019-06-14 | 46 | 0d | Programador Sénior; Engenheiro de Redes e Segurança Informática | 48h | 1,002 |
| 48 | 1.6.6 | Desenvolvimento do arrendamento por parte dos utilizadores | 15d | 2019-06-14 | 2019-07-08 | 47 | 0d | Programador Junior1; Programador Junior2; Engenheiro de Redes e Segurança Informática | 360h | 5,112 |
| 49 | 1.6.7 | Testes aos arrendamento | 3d | 2019-07-08 | 2019-07-11 | 48 | 0d | Programador Junior1; Programador Junior2; Engenheiro de Redes e Segurança Informática | 72h | 1,022.4 |
| 50 | 1.6.8 | Desenvolvimento dos métodos de pagamento | 15d | 2019-07-11 | 2019-08-01 | 49 | 0d | Engenheiro de Redes e Segurança Informática; Programador Sénior | 240h | 5,010 |
| 51 | 1.6.9 | Testes aos métodos de pagamento | 3d | 2019-08-01 | 2019-08-06 | 50 | 0d | Engenheiro de Redes e Segurança Informática; Programador Sénior | 48h | 1,002 |
| 52 | 1.6.10 | Desenvolvimento de funções adicionais | 10d | 2019-08-06 | 2019-08-21 | 51 | 0d | Engenheiro de Redes e Segurança Informática; Programador Junior1; Programador Junior2 | 240h | 3,408 |
| 53 | 1.6.11 | Teste às funções adicionais | 3d | 2019-08-21 | 2019-08-26 | 52 | 0d | Engenheiro de Redes e Segurança Informática; Programador Junior1; Programador Junior2 | 72h | 1,022.4 |
| 54 | 1.6.12 | Agregação e implementação do software | 6d | 2019-08-26 | 2019-09-03 | 53 | 0d | Engenheiro de Redes e Segurança Informática; Engenheiro de Software; Programador Sénior | 144h | 3,003.84 |

| ID | WBS | Task | Type | Duration | Start | Finish | Predecessors | Total slack | Resources | Work | Cost |
| --- | --- | --- | --- | --- | --- | --- | --- | --- | --- | --- | --- |
| 55 | 1.7 | **Controlo de qualidade** |  | 14d | 2019-09-03 | 2019-09-23 |  | 0d |  | 416h | 6,399.2 |
| 56 | 1.7.1 | Alpha testing |  | 4d | 2019-09-03 | 2019-09-09 | 54 | 0d | Analista; Designer/UX Developer; Programador Sénior; Engenheiro de Redes e Segurança Informática | 128h | 2,136 |
| 57 | 1.7.2 | Correção de erros |  | 2d | 2019-09-09 | 2019-09-11 | 56 | 0d | Programador Junior1; Programador Junior2; Engenheiro de Redes e Segurança Informática | 48h | 681.6 |
| 58 | 1.7.3 | Beta testing |  | 4d | 2019-09-11 | 2019-09-17 | 57 | 0d | Analista; Designer/UX Developer; Programador Sénior; User Tester; Engenheiro de Redes e Segurança Informática | 160h | 2,232 |
| 59 | 1.7.4 | Correções finais |  | 2d | 2019-09-17 | 2019-09-19 | 58 | 0d | Programador Junior1; Programador Junior2; Engenheiro de Redes e Segurança Informática | 48h | 681.6 |
| 60 | 1.7.5 | Otimização do código |  | 2d | 2019-09-19 | 2019-09-23 | 59 | 0d | Programador Sénior; Engenheiro de Redes e Segurança Informática | 32h | 668 |
| 61 | 1.8 | **Apresentação ao cliente** |  | 3.38d | 2019-09-23 | 2019-09-26 |  | 0d |  | 78h | 1,420.8 |
| 62 | 1.8.1 | Testes com o cliente |  | 3h | 2019-09-23 | 2019-09-23 | 60 | 0d | Analista; Gestor de Projetos | 6h | 118.8 |
| 63 | 1.8.2 | Refinamento final |  | 3d | 2019-09-23 | 2019-09-26 | 62 | 0d | Designer/UX Developer; Engenheiro de Redes e Segurança Informática; Programador Sénior | 72h | 1,302 |
| 64 | 1.9 | **Análise global sobre o desenvolvimento da plataforma** |  | 0.5d | 2019-09-26 | 2019-09-26 |  | 0d |  | 4h | 79.2 |
| 65 | 1.9.1 | Relatório da performance da equipa comparativamente com o cumprimentos das datas estipuladas para cada fase |  | 2h | 2019-09-26 | 2019-09-26 | 63 | 0d | Gestor de Projetos | 2h | 54.2 |
| 66 | 1.9.2 | Relatório sobre os custos totais da aplicação |  | 2h | 2019-09-26 | 2019-09-26 | 65 | 0d | Analista | 2h | 25 |
| 67 | 1.10 | Lançamento da aplicação | milestone | 0d | 2019-09-26 | 2019-09-26 | 63 | 0.5d | Gestor de Projetos |  |  |
